# Galway

Schedule from MS Project, 2012-06-13 to 2012-11-09.

## Calendars

- Standard: Mon-Fri 08:00-12:00, 13:00-17:00; Sat-Sun off.

## Resources

| Resource |
| --- |
| BC |
| COB |
| MS |
| IT Galway |
| ROB |
| DC |

## Schedule

| ID | WBS | Task | Type | Duration | Start | Finish | Predecessors | Total slack | Free slack | Resources | Work |
| --- | --- | --- | --- | --- | --- | --- | --- | --- | --- | --- | --- |
| 1 | 1 | **Milestones** |  | 85d? | 2012-06-27 | 2012-10-23 |  | 0d |  |  |  |
| 2 | 1.1 | Radiology Go-Live | milestone | 1d | 2012-06-27 | 2012-06-27 | 29 | 0d |  |  |  |
| 3 | 1.2 | Theatre Go-Live | milestone | 1d | 2012-06-27 | 2012-06-27 | 30, 71 | 95d | 0d |  |  |
| 4 | 1.3 | Cardiology Go-Live | milestone | 1d | 2012-06-28 | 2012-06-28 | 3, 71 | 95d | 0d |  |  |
| 5 | 1.4 | ER Go-live | milestone | 1d | 2012-06-29 | 2012-06-29 | 4, 71 | 95d |  |  |  |
| 6 | 1.5 | HCM Consultant Out-Patient Bookings | milestone | 1d | 2012-09-18 | 2012-09-18 | 47 | 38d |  |  |  |
| 7 | 1.6 | HCM GP/Public Out-Patient Booking |  | 1d | 2012-10-23 | 2012-10-23 | 64, 45, 59 | 13d |  |  |  |
| 8 | 1.7 | HCM GP to Consultant Booking | milestone | 1d | 2012-10-22 | 2012-10-22 | 64, 45, 10 | 14d |  |  |  |
| 10 | 2 | **Requirements** |  | 14d? | 2012-06-13 | 2012-07-02 |  | 0d |  |  | 136h |
| 11 | 2.1 | Get Requirements Folder/Excel Spreadsheet |  | 2d | 2012-06-13 | 2012-06-14 |  | 69d | 0d | MS | 16h |
| 12 | 2.2 | Get GP Referral Form |  | 2d | 2012-06-15 | 2012-06-18 | 11 | 69d | 0d | MS | 16h |
| 13 | 2.3 | Get Meditech Screens for making a booking in Meditech |  | 2d | 2012-06-19 | 2012-06-20 | 12 | 69d | 0d | MS | 16h |
| 14 | 2.4 | Get Meditech Screens where scanning should occur |  | 2d | 2012-06-21 | 2012-06-22 | 13 | 69d | 0d | MS | 16h |
| 15 | 2.5 | Define Admission Rules |  | 2d | 2012-06-25 | 2012-06-26 | 14 | 69d | 0d | MS; DC | 32h |
| 16 | 2.6 | Get List of Early Adopting GPs (Practise Management Software) |  | 2d | 2012-06-27 | 2012-06-28 | 15 | 69d | 0d | MS | 16h |
| 17 | 2.7 | Get List of all Consultants (Practise Management Software) |  | 2d | 2012-06-29 | 2012-07-02 | 16 | 69d | 59d | MS | 16h |
| 18 | 2.8 | Get Samsung Tablet | manual | 1d? | 2012-06-13 | 2012-06-13 |  |  |  | MS | 8h |
| 20 | 3 | **Scanning** |  | 19d | 2012-09-06 | 2012-10-02 | 28 | 28d |  |  | 240h |
| 21 | 3.1 | Develop Scanning Application for Admissions |  | 19d | 2012-09-06 | 2012-10-02 |  | 28d |  | BC; ROB; COB | 240h |
| 23 | 4 | **3rd Party Integration** |  | 27d | 2012-09-20 | 2012-10-26 | 28 | 10d |  |  | 152h |
| 24 | 4.1 | Chase all vendors for status update |  | 2d | 2012-09-20 | 2012-09-21 |  | 10d | 0d | ROB | 16h |
| 25 | 4.2 | Develop Deployment Manual for IT/GP Liason |  | 3d | 2012-10-04 | 2012-10-08 | 24, 17 | 10d | 0d | ROB | 24h |
| 26 | 4.3 | Visit each consultants office and check integration setup |  | 14d | 2012-10-09 | 2012-10-26 | 17, 25 | 10d |  | IT Galway | 112h |
| 28 | 5 | **WCS/Harmony** |  | 61d | 2012-06-13 | 2012-09-05 |  | 0d |  |  | 720h |
| 29 | 5.1 | Snag List/Testing |  | 10d | 2012-06-13 | 2012-06-26 |  | 0d |  | BC; ROB | 160h |
| 30 | 5.2 | Administration Console |  | 10d | 2012-06-13 | 2012-06-26 |  | 51d | 0d | COB; BC; ROB | 240h |
| 31 | 5.3 | Bedboard Prototype |  | 10d | 2012-06-28 | 2012-07-11 | 2, 29 | 0d |  | BC | 80h |
| 32 | 5.4 | Bedboard |  | 15d | 2012-07-12 | 2012-08-01 | 31 | 0d |  | BC | 120h |
| 33 | 5.5 | Discharge 3 hourly report |  | 5d | 2012-08-02 | 2012-08-08 | 32 | 0d |  | BC; ROB; COB | 120h |
| 34 | 5.6 | Cleaning Module |  | 20d | 2012-08-09 | 2012-09-05 | 33 | 0d |  |  |  |

| ID | WBS | Task | Duration | Start | Finish | Predecessors | Total slack | Free slack | Resources | Work |
| --- | --- | --- | --- | --- | --- | --- | --- | --- | --- | --- |
| 36 | 6 | **SSIS** | 36d | 2012-06-13 | 2012-08-01 |  | 72d |  |  | 328h |
| 37 | 6.1 | Falls Risk/MRSA Status Script | 2d | 2012-06-13 | 2012-06-14 |  | 72d | 0d | COB | 16h |
| 38 | 6.2 | Clinical Indicators Query | 2d | 2012-06-15 | 2012-06-18 | 37 | 72d | 0d | COB | 16h |
| 39 | 6.3 | Lab Results | 2d | 2012-06-19 | 2012-06-20 | 38 | 72d | 0d | COB | 16h |
| 40 | 6.4 | Review HCB | 5d | 2012-06-21 | 2012-06-27 | 39 | 72d | 0d | COB | 40h |
| 41 | 6.5 | Design SSIS HCM Database (Seperation between HCM and WCS) | 5d | 2012-06-28 | 2012-07-04 | 40 | 72d | 0d | COB | 40h |
| 42 | 6.6 | Migrate HCB Data to HCM Galway (Users Passwords, Resources, Schedules) | 20d | 2012-07-05 | 2012-08-01 | 41 | 72d |  | COB | 160h |
| 43 | 6.7 | Real-time admission and order data to DMZ | 5d | 2012-06-15 | 2012-06-21 | 60 | 101d |  | COB | 40h |
| 45 | 7 | **HCM Development** | 32d? | 2012-09-06 | 2012-10-19 | 28 | 0d |  |  | 496h |
| 46 | 7.1 | Create Broker Page (In, Out, Day) | 3d | 2012-09-06 | 2012-09-10 |  | 0d |  | ROB | 24h |
| 47 | 7.2 | Create Public Radiology Booking | 5d | 2012-09-11 | 2012-09-17 | 46 | 0d |  | ROB | 40h |
| 48 | 7.3 | Create Public Admission Form for Consultants (Pin?) | 5d | 2012-09-18 | 2012-09-24 | 47 | 0d |  | ROB | 40h |
| 49 | 7.4 | Create GP Referral Form for Consultants | 5d | 2012-09-25 | 2012-10-01 | 48 | 0d |  | ROB | 40h |
| 50 | 7.5 | CalDAV Server | 10d | 2012-09-06 | 2012-09-19 |  | 22d |  | ROB; BC; COB | 240h |
| 51 | 7.6 | Consultant Register Process (Enter Details, Email IT, IT Select Consultant, Activate) | 6d | 2012-10-02 | 2012-10-09 | 49 | 0d |  | ROB | 48h |
| 52 | 7.7 | Admin Console (Script Log/Reset, Activate Consultants GPs) | 8d | 2012-10-10 | 2012-10-19 | 51 | 0d |  | ROB | 64h |
| 54 | 8 | **Workflow Development** | 15d? | 2012-10-22 | 2012-11-09 | 45 | 0d |  |  | 120h |
| 55 | 8.1 | GP Referral Workflow | 5d | 2012-10-22 | 2012-10-26 |  | 0d |  | ROB | 40h |
| 56 | 8.2 | Radiology/Out-Patient Booking Form Workflow | 5d | 2012-10-29 | 2012-11-02 | 55 | 0d |  | ROB | 40h |
| 57 | 8.3 | Consultant Booking Form Workflow | 5d | 2012-11-05 | 2012-11-09 | 56 | 0d |  | ROB | 40h |
| 59 | 9 | **IPeople** | 94d? | 2012-06-13 | 2012-10-22 |  | 13d | 0d |  | 32h |
| 60 | 9.1 | Query to get real-time order and admission data to DMZ? | 2d | 2012-06-13 | 2012-06-14 |  | 101d | 0d | ROB | 16h |
| 61 | 9.2 | Create Dummy SQL Stored Procedure | 1d | 2012-06-15 | 2012-06-15 | 60 | 103d | 90d | ROB | 8h |
| 62 | 9.3 | Radiology Booking Script | 1d? | 2012-10-22 | 2012-10-22 | 45, 61 | 13d |  | ROB | 8h |

| ID | WBS | Task | Type | Duration | Start | Finish | Predecessors | Total slack | Free slack | Resources | Work |
| --- | --- | --- | --- | --- | --- | --- | --- | --- | --- | --- | --- |
| 64 | 10 | **Infrastructure** |  | 3d? | 2012-06-13 | 2012-06-15 |  | 0d |  |  | 24h |
| 65 | 10.1 | Setup HCB in Galway DMZ |  | 1d? | 2012-06-13 | 2012-06-13 |  | 104d | 0d | IT Galway | 8h |
| 66 | 10.2 | DNS Record to auto-redirect to in-house server |  | 1d | 2012-06-14 | 2012-06-14 | 65 | 104d | 0d | IT Galway | 8h |
| 67 | 10.3 | Investigate Ability to use RSA Fobs for GP and Offsite Consultants |  | 1d? | 2012-06-15 | 2012-06-15 | 66 | 104d |  | IT Galway | 8h |
| 68 | 10.4 | Wall-mount Screens | manual | 1d? | 2012-06-13 | 2012-06-13 |  |  |  |  |  |
| 70 | 11 | **Training** |  | 1d | 2012-06-13 | 2012-06-13 |  | 104d |  |  | 16h |
| 71 | 11.1 | Train IT to use Admin Console |  | 1d | 2012-06-13 | 2012-06-13 |  | 104d | 9d | IT Galway; ROB | 16h |
